# 校准系统_第一阶段_进度计划

Schedule from MS Project, 2020-06-08 to 2020-07-30.

## Calendars

- 标准: Mon-Fri 08:00-12:00, 13:00-17:00; Sat-Sun off.

## Resources

| Resource |
| --- |
| 罗志勇 |
| 彭明东 |

## Schedule

| ID | WBS | Task | Duration | Start | Finish | Predecessors | Total slack | Free slack | Constraint |
| --- | --- | --- | --- | --- | --- | --- | --- | --- | --- |
| 2 | 1 | **总体设计文档编写** | 5d | 2020-06-08 | 2020-06-12 |  | 34d |  |  |
| 3 | 1.1 | 日志、序列号管理部分设计文档 | 1d | 2020-06-09 | 2020-06-09 |  | 35d | 0d | start no earlier than 2020-06-09 |
| 4 | 1.2 | 校准命令、校准结果返回命令规范文档 | 1d | 2020-06-10 | 2020-06-10 | 3 | 35d | 0d |  |
| 5 | 1.3 | 与执行板通讯接口确认 | 1d | 2020-06-11 | 2020-06-11 | 4 | 35d |  |  |
| 6 | 1.4 | 核心业务设计文档 | 3d | 2020-06-08 | 2020-06-10 |  | 34d | 0d | start no earlier than 2020-06-08 |
| 7 | 1.5 | 文档完善 | 2d | 2020-06-11 | 2020-06-12 | 6 | 34d |  |  |
| 9 | 2 | **软件原型设计与关键技术** | 5d | 2020-06-15 | 2020-06-19 |  | 0d |  |  |
| 10 | 2.1 | **UI界面设计开发** | 3d | 2020-06-15 | 2020-06-17 |  | 0d |  |  |
| 11 | 2.1.1 | 主界面原型开发与设计 | 1d | 2020-06-15 | 2020-06-15 |  | 0d |  | start no earlier than 2020-06-15 |
| 12 | 2.1.2 | 校准操作界面、状态显示界面开发 | 1d | 2020-06-16 | 2020-06-16 | 11 | 0d |  | start no earlier than 2020-06-11 |
| 13 | 2.1.3 | 日志、用户管理界面开发 | 1d | 2020-06-17 | 2020-06-17 | 12 | 0d |  | start no earlier than 2020-06-15 |
| 14 | 2.2 | **关键技术验证** | 2d | 2020-06-18 | 2020-06-19 |  | 29d |  |  |
| 15 | 2.2.1 | 标准源控制 | 1d | 2020-06-18 | 2020-06-18 |  | 29d | 0d | start no earlier than 2020-06-18 |
| 16 | 2.2.2 | 其它关键技术 | 1d | 2020-06-19 | 2020-06-19 | 15 | 29d |  |  |
| 18 | 3 | **执行板单片机软件修改** | 5d | 2020-06-15 | 2020-06-19 |  | 29d |  |  |
| 19 | 3.1 | 模块自识别功能 | 1d | 2020-06-15 | 2020-06-15 |  | 29d | 0d | start no earlier than 2020-06-15 |
| 20 | 3.2 | 执行板校准改进 | 2d | 2020-06-16 | 2020-06-17 | 19 | 29d | 0d |  |
| 21 | 3.3 | 执行板校准启动、结束命令统一 | 1d | 2020-06-18 | 2020-06-18 | 20 | 29d | 0d |  |
| 22 | 3.4 | 执行板序列号功能 | 1d | 2020-06-19 | 2020-06-19 | 21 | 29d |  |  |
| 24 | 4 | **软件开发** | 18d | 2020-06-18 | 2020-07-13 |  | 0d |  |  |
| 25 | 4.1 | **协议对接模块** | 4d | 2020-06-18 | 2020-06-23 |  | 0d |  |  |
| 26 | 4.1.1 | 串口、Modbus通讯 | 1d | 2020-06-18 | 2020-06-18 | 10 | 0d |  | start no earlier than 2020-06-15 |
| 27 | 4.1.2 | 标准源控制 | 1d | 2020-06-19 | 2020-06-19 | 26 | 0d |  | start no earlier than 2020-06-16 |
| 28 | 4.1.3 | 执行板数据读取、解析 | 1d | 2020-06-22 | 2020-06-22 | 27 | 0d |  |  |
| 29 | 4.1.4 | 执行板开关控制 | 1d | 2020-06-23 | 2020-06-23 | 28 | 0d |  |  |

| ID | WBS | Task | Duration | Start | Finish | Predecessors | Total slack | Free slack |
| --- | --- | --- | --- | --- | --- | --- | --- | --- |
| 30 | 4.2 | **核心业务软件开发** | 5d | 2020-06-24 | 2020-06-30 |  | 0d |  |
| 31 | 4.2.1 | 模块自识别 | 1d | 2020-06-24 | 2020-06-24 | 25 | 0d |  |
| 32 | 4.2.2 | 校准业务 | 1d | 2020-06-25 | 2020-06-25 | 31 | 0d |  |
| 33 | 4.2.3 | 数据采集 | 1d | 2020-06-26 | 2020-06-26 | 32 | 0d |  |
| 34 | 4.2.4 | 结果判定 | 1d | 2020-06-29 | 2020-06-29 | 33 | 0d |  |
| 35 | 4.2.5 | 硬件调试 | 1d | 2020-06-30 | 2020-06-30 | 34 | 0d |  |
| 36 | 4.3 | **序列号管理** | 2d | 2020-07-01 | 2020-07-02 | 30 | 0d |  |
| 37 | 4.3.1 | 序列号创建、验证 | 1d | 2020-07-01 | 2020-07-01 |  | 0d |  |
| 38 | 4.3.2 | 序列号保存及功能完善 | 1d | 2020-07-02 | 2020-07-02 | 37 | 0d |  |
| 39 | 4.4 | **日志管理** | 7d | 2020-07-03 | 2020-07-13 | 36 | 0d |  |
| 40 | 4.4.1 | **数据库** | 3d | 2020-07-03 | 2020-07-07 |  | 0d |  |
| 41 | 4.4.1.1 | 设计和初始化 | 1d | 2020-07-03 | 2020-07-03 |  | 0d |  |
| 42 | 4.4.1.2 | 通用操作 | 1d | 2020-07-06 | 2020-07-06 | 41 | 0d |  |
| 43 | 4.4.1.3 | 显示模型设计 | 1d | 2020-07-07 | 2020-07-07 | 42 | 0d |  |
| 44 | 4.4.2 | 日期导航 | 1d | 2020-07-08 | 2020-07-08 | 40 | 0d |  |
| 45 | 4.4.3 | 功能操作 | 1d | 2020-07-09 | 2020-07-09 | 44 | 0d |  |
| 46 | 4.4.4 | 查询功能 | 1d | 2020-07-10 | 2020-07-10 | 45 | 0d |  |
| 47 | 4.4.5 | 导出EXCEL | 1d | 2020-07-13 | 2020-07-13 | 46 | 0d |  |
| 48 | 4.5 | **用户管理** | 3d | 2020-07-03 | 2020-07-07 | 36 | 2d | 0d |
| 49 | 4.5.1 | 用户表数据库表功能完善 | 1d | 2020-07-03 | 2020-07-03 |  | 2d | 0d |
| 50 | 4.5.2 | 用户常规管理功能 | 1d | 2020-07-06 | 2020-07-06 | 49 | 2d | 0d |
| 51 | 4.5.3 | 用户权限控制功能 | 1d | 2020-07-07 | 2020-07-07 | 50 | 2d |  |
| 52 | 4.6 | **参数管理** | 2d | 2020-07-08 | 2020-07-09 | 48 | 2d |  |
| 53 | 4.6.1 | 配置文件操作 | 1d | 2020-07-08 | 2020-07-08 |  | 2d | 0d |
| 54 | 4.6.2 | 参数管理功能完善 | 1d | 2020-07-09 | 2020-07-09 | 53 | 2d |  |

| ID | WBS | Task | Duration | Start | Finish | Predecessors | Total slack | Free slack | Constraint |
| --- | --- | --- | --- | --- | --- | --- | --- | --- | --- |
| 56 | 5 | **系统联调** | 5d | 2020-07-14 | 2020-07-20 | 24 | 8d |  |  |
| 57 | 5.1 | 校准业务联调 | 2d | 2020-07-14 | 2020-07-15 |  | 8d | 0d |  |
| 58 | 5.2 | 数据采集联调 | 2d | 2020-07-16 | 2020-07-17 | 57 | 8d | 0d |  |
| 59 | 5.3 | 序列号业务联调 | 1d | 2020-07-20 | 2020-07-20 | 58 | 8d |  |  |
| 61 | 6 | **系统测试** | 13d | 2020-07-14 | 2020-07-30 |  | 0d |  |  |
| 62 | 6.1 | **测试用例编写** | 8d | 2020-07-14 | 2020-07-23 | 24 | 0d |  |  |
| 63 | 6.1.1 | 核心业务测试用例 | 2d | 2020-07-14 | 2020-07-15 |  | 0d |  | start no earlier than 2020-06-18 |
| 64 | 6.1.2 | 序列号管理测试用例 | 2d | 2020-07-16 | 2020-07-17 | 63 | 0d |  |  |
| 65 | 6.1.3 | 日志管理 | 2d | 2020-07-20 | 2020-07-21 | 64 | 0d |  |  |
| 66 | 6.1.4 | 用户管理测试用例 | 2d | 2020-07-22 | 2020-07-23 | 65 | 0d |  |  |
| 67 | 6.2 | 功能测试 | 5d | 2020-07-24 | 2020-07-30 | 62 | 0d |  |  |
| 69 | 7 | **项目文档完善** | 5d | 2020-07-14 | 2020-07-20 |  | 8d |  |  |
| 70 | 7.1 | 设计文档修改 | 2d | 2020-07-14 | 2020-07-15 | 24 | 8d | 0d |  |
| 71 | 7.2 | 操作说明文档 | 2d | 2020-07-16 | 2020-07-17 | 70 | 8d | 0d |  |
| 72 | 7.3 | 其它文档补充 | 1d | 2020-07-20 | 2020-07-20 | 71 | 8d |  |  |
| 74 | 8 | **项目交付** | 5d | 2020-07-24 | 2020-07-30 |  | 0d |  |  |
| 75 | 8.1 | 软件BUG解决 | 3d | 2020-07-24 | 2020-07-28 | 62 | 0d |  |  |
| 76 | 8.2 | 软件交付 | 2d | 2020-07-29 | 2020-07-30 | 75 | 0d |  |  |
