# 校准系统_第一阶段_进度计划

Schedule from MS Project, 2020-06-08 to 2020-07-28, A marks actual dates.

## Calendars

- 标准: Mon-Fri 08:00-12:00, 13:00-17:00; Sat-Sun off.

## Resources

| Resource |
| --- |
| 罗志勇 |
| 彭明东 |
| 欧阳玲军 |
| 中试部 |

## Schedule

| ID | WBS | Task | Duration | Start | Finish | Predecessors | Complete | Remaining | Total slack | Free slack | Constraint | Resources | Work | Actual work |
| --- | --- | --- | --- | --- | --- | --- | --- | --- | --- | --- | --- | --- | --- | --- |
| 2 | 1 | **总体设计文档编写** | 5d | 2020-06-08 A | 2020-06-12 |  | 70% | 1.5d | 32d |  |  |  | 96h | 64h |
| 3 | 1.1 | 工作分解 | 1d | 2020-06-08 A | 2020-06-08 A |  | 100% |  |  |  | start no earlier than 2020-06-08 | 罗志勇 | 8h | 8h |
| 4 | 1.2 | 日志、序列号管理部分设计文档 | 1d | 2020-06-08 A | 2020-06-08 A |  | 100% |  |  |  | start no earlier than 2020-06-08 | 彭明东 | 8h | 8h |
| 5 | 1.3 | 校准命令、校准结果返回命令和执行板类型读取返回命令规范文档 | 1d | 2020-06-09 A | 2020-06-09 A | 4 | 100% |  |  |  |  | 罗志勇; 欧阳玲军 | 16h | 16h |
| 6 | 1.4 | 与执行板通讯接口确认 | 1d | 2020-06-10 | 2020-06-10 | 5 |  |  | 34d |  |  | 罗志勇; 欧阳玲军 | 16h |  |
| 7 | 1.5 | 核心业务设计文档 | 2d | 2020-06-09 A | 2020-06-10 A | 3 | 100% |  |  |  |  | 彭明东 | 16h | 16h |
| 8 | 1.6 | 文档完善 | 2d | 2020-06-11 | 2020-06-12 | 7 |  |  | 32d |  |  | 彭明东 | 16h |  |
| 9 | 1.7 | 标准源控制和关键技术验证 | 2d | 2020-06-11 A | 2020-06-12 A | 6 | 100% |  |  |  |  | 罗志勇 | 16h | 16h |
| 11 | 2 | **执行板单片机软件修改** | 10d | 2020-06-15 | 2020-06-26 |  |  |  | 22d |  |  | 欧阳玲军 | 160h |  |
| 12 | 2.1 | 模块自识别功能 | 2d | 2020-06-15 | 2020-06-16 |  |  |  | 22d | 0d | start no earlier than 2020-06-15 | 欧阳玲军 | 16h |  |
| 13 | 2.2 | 执行板校准改进 | 3d | 2020-06-17 | 2020-06-19 | 12 |  |  | 22d | 0d |  | 欧阳玲军 | 24h |  |
| 14 | 2.3 | 执行板校准启动、结束命令统一 | 2d | 2020-06-22 | 2020-06-23 | 13 |  |  | 22d | 0d |  | 欧阳玲军 | 16h |  |
| 15 | 2.4 | 执行板序列号功能 | 3d | 2020-06-24 | 2020-06-26 | 14 |  |  | 22d |  |  | 欧阳玲军 | 24h |  |
| 17 | 3 | **软件原型设计与关键技术** | 5d | 2020-06-15 | 2020-06-19 |  |  |  | 27d |  |  | 彭明东 | 120h |  |
| 18 | 3.1 | **UI界面设计开发** | 3d | 2020-06-15 | 2020-06-17 |  |  |  | 29d |  |  | 彭明东 | 48h |  |
| 19 | 3.1.1 | 主界面原型开发与设计 | 1d | 2020-06-15 | 2020-06-15 |  |  |  | 29d | 0d | start no earlier than 2020-06-15 | 彭明东 | 8h |  |
| 20 | 3.1.2 | 校准操作界面、状态显示界面开发 | 1d | 2020-06-16 | 2020-06-16 | 19 |  |  | 29d | 0d | start no earlier than 2020-06-11 | 彭明东 | 8h |  |
| 21 | 3.1.3 | 日志、用户管理界面开发 | 1d | 2020-06-17 | 2020-06-17 | 20 |  |  | 29d |  | start no earlier than 2020-06-15 | 彭明东 | 8h |  |
| 22 | 3.2 | **关键技术添加** | 2d | 2020-06-18 | 2020-06-19 |  |  |  | 27d |  |  | 彭明东 | 32h |  |
| 23 | 3.2.1 | 标准源控制添加到系统 | 1d | 2020-06-18 | 2020-06-18 |  |  |  | 27d | 0d | start no earlier than 2020-06-18 | 彭明东 | 8h |  |
| 24 | 3.2.2 | 其它关键技术添加到系统 | 1d | 2020-06-19 | 2020-06-19 | 23 |  |  | 27d |  |  | 彭明东 | 8h |  |
| 26 | 4 | **软件开发** | 15d | 2020-06-15 | 2020-07-03 |  |  |  | 4d | 0d |  |  | 304h |  |
| 27 | 4.1 | **协议对接模块** | 4d | 2020-06-15 | 2020-06-18 |  |  |  | 15d |  |  |  | 32h |  |
| 28 | 4.1.1 | 串口、Modbus通讯 | 1d | 2020-06-15 | 2020-06-15 |  |  |  | 15d | 0d | start no earlier than 2020-06-15 | 彭明东 | 8h |  |
| 29 | 4.1.2 | 执行板数据读取、解析 | 2d | 2020-06-16 | 2020-06-17 | 28 |  |  | 15d | 0d |  | 彭明东 | 16h |  |
| 30 | 4.1.3 | 执行板开关控制 | 1d | 2020-06-18 | 2020-06-18 | 29 |  |  | 15d |  |  | 彭明东 | 8h |  |

| ID | WBS | Task | Duration | Start | Finish | Predecessors | Total slack | Free slack | Constraint | Resources | Work |
| --- | --- | --- | --- | --- | --- | --- | --- | --- | --- | --- | --- |
| 31 | 4.2 | **核心业务软件开发** | 5d | 2020-06-15 | 2020-06-19 |  | 14d |  |  |  | 40h |
| 32 | 4.2.1 | 模块自识别 | 1d | 2020-06-15 | 2020-06-15 |  | 14d | 0d | start no earlier than 2020-06-15 | 罗志勇 | 8h |
| 33 | 4.2.2 | 校准业务 | 1d | 2020-06-16 | 2020-06-16 | 32 | 14d | 0d |  | 罗志勇 | 8h |
| 34 | 4.2.3 | 数据采集 | 1d | 2020-06-17 | 2020-06-17 | 33 | 14d | 0d |  | 罗志勇 | 8h |
| 35 | 4.2.4 | 结果判定 | 1d | 2020-06-18 | 2020-06-18 | 34 | 14d | 0d |  | 罗志勇 | 8h |
| 36 | 4.2.5 | 硬件调试 | 1d | 2020-06-19 | 2020-06-19 | 35 | 14d |  |  | 罗志勇 | 8h |
| 37 | 4.3 | **序列号管理** | 2d | 2020-06-22 | 2020-06-23 |  |  |  |  |  | 16h |
| 38 | 4.3.1 | 序列号创建、验证 | 1d | 2020-06-22 | 2020-06-22 |  | 5d | 0d |  | 罗志勇 | 8h |
| 39 | 4.3.2 | 序列号保存及功能完善 | 1d | 2020-06-23 | 2020-06-23 | 38 | 5d |  |  | 罗志勇 | 8h |
| 40 | 4.4 | **日志管理** | 7d | 2020-06-24 | 2020-07-02 | 37 | 5d |  |  | 罗志勇 | 136h |
| 41 | 4.4.1 | **数据库** | 3d | 2020-06-24 | 2020-06-26 |  | 5d | 0d |  | 罗志勇 | 48h |
| 42 | 4.4.1.1 | 设计和初始化 | 1d | 2020-06-24 | 2020-06-24 |  | 5d | 0d |  | 罗志勇 | 8h |
| 43 | 4.4.1.2 | 通用操作 | 1d | 2020-06-25 | 2020-06-25 | 42 | 5d | 0d |  | 罗志勇 | 8h |
| 44 | 4.4.1.3 | 显示模型设计 | 1d | 2020-06-26 | 2020-06-26 | 43 | 5d |  |  | 罗志勇 | 8h |
| 45 | 4.4.2 | 日期导航 | 1d | 2020-06-29 | 2020-06-29 | 41 | 5d | 0d |  | 彭明东 | 8h |
| 46 | 4.4.3 | 功能操作 | 1d | 2020-06-30 | 2020-06-30 | 45 | 5d | 0d |  | 彭明东 | 8h |
| 47 | 4.4.4 | 查询功能 | 1d | 2020-07-01 | 2020-07-01 | 46 | 5d | 0d |  | 彭明东 | 8h |
| 48 | 4.4.5 | 导出EXCEL | 1d | 2020-07-02 | 2020-07-02 | 47 | 5d |  |  | 彭明东 | 8h |
| 49 | 4.5 | **用户管理** | 3d | 2020-06-29 | 2020-07-01 | 37 |  |  |  | 彭明东 | 48h |
| 50 | 4.5.1 | 用户表数据库表功能完善 | 1d | 2020-06-29 | 2020-06-29 |  | 4d | 0d |  | 彭明东 | 8h |
| 51 | 4.5.2 | 用户常规管理功能 | 1d | 2020-06-30 | 2020-06-30 | 50 | 4d | 0d |  | 罗志勇 | 8h |
| 52 | 4.5.3 | 用户权限控制功能 | 1d | 2020-07-01 | 2020-07-01 | 51 | 4d |  |  | 罗志勇 | 8h |
| 53 | 4.6 | **参数管理** | 2d | 2020-07-02 | 2020-07-03 | 49 | 4d |  |  | 彭明东 | 32h |
| 54 | 4.6.1 | 配置文件操作 | 1d | 2020-07-02 | 2020-07-02 |  | 4d | 0d |  | 彭明东 | 8h |
| 55 | 4.6.2 | 参数管理功能完善 | 1d | 2020-07-03 | 2020-07-03 | 54 | 4d |  |  | 彭明东 | 8h |

| ID | WBS | Task | Duration | Start | Finish | Predecessors | Total slack | Free slack | Constraint | Resources | Work |
| --- | --- | --- | --- | --- | --- | --- | --- | --- | --- | --- | --- |
| 57 | 5 | **系统联调** | 10d | 2020-07-06 | 2020-07-17 | 26 | 7d |  |  | 彭明东; 罗志勇 | 320h |
| 58 | 5.1 | 校准业务联调 | 2d | 2020-07-06 | 2020-07-07 |  | 9d | 0d |  | 彭明东; 罗志勇 | 32h |
| 59 | 5.2 | 数据采集联调 | 2d | 2020-07-08 | 2020-07-09 | 58 | 9d | 0d |  | 彭明东; 罗志勇 | 32h |
| 60 | 5.3 | 序列号业务联调 | 1d | 2020-07-10 | 2020-07-10 | 59 | 9d | 0d |  | 彭明东; 罗志勇 | 16h |
| 61 | 5.4 | 结果判定调试 | 1d | 2020-07-13 | 2020-07-13 | 60 | 9d | 0d |  | 彭明东; 罗志勇 | 16h |
| 62 | 5.5 | 用户管理调试 | 1d | 2020-07-14 | 2020-07-14 | 61 | 9d | 0d |  | 彭明东; 罗志勇 | 16h |
| 63 | 5.6 | 日志管理调试 | 1d | 2020-07-15 | 2020-07-15 | 62 | 9d |  |  | 彭明东; 罗志勇 | 16h |
| 64 | 5.7 | 其他功能调试 | 2d | 2020-07-16 | 2020-07-17 |  | 7d |  | start no earlier than 2020-07-16 | 彭明东; 罗志勇 | 32h |
| 66 | 6 | **系统测试** | 13d | 2020-07-06 | 2020-07-22 |  | 4d |  |  | 中试部 | 272h |
| 67 | 6.1 | **测试用例编写** | 8d | 2020-07-06 | 2020-07-15 | 26 | 4d | 0d |  | 中试部 | 128h |
| 68 | 6.1.1 | 核心业务测试用例 | 2d | 2020-07-06 | 2020-07-07 |  | 4d | 0d | start no earlier than 2020-06-18 | 中试部 | 16h |
| 69 | 6.1.2 | 序列号管理测试用例 | 2d | 2020-07-08 | 2020-07-09 | 68 | 4d | 0d |  | 中试部 | 16h |
| 70 | 6.1.3 | 日志管理 | 2d | 2020-07-10 | 2020-07-13 | 69 | 4d | 0d |  | 中试部 | 16h |
| 71 | 6.1.4 | 用户管理测试用例 | 2d | 2020-07-14 | 2020-07-15 | 70 | 4d |  |  | 中试部 | 16h |
| 72 | 6.2 | 功能测试 | 5d | 2020-07-16 | 2020-07-22 | 67 | 4d |  |  | 中试部 | 40h |
| 74 | 7 | **项目文档完善** | 5d | 2020-07-06 | 2020-07-10 |  | 12d |  |  | 罗志勇; 彭明东 | 160h |
| 75 | 7.1 | 设计文档修改 | 2d | 2020-07-06 | 2020-07-07 | 26 | 12d | 0d |  | 罗志勇; 彭明东 | 32h |
| 76 | 7.2 | 操作说明文档 | 2d | 2020-07-08 | 2020-07-09 | 75 | 12d | 0d |  | 罗志勇; 彭明东 | 32h |
| 77 | 7.3 | 其它文档补充 | 1d | 2020-07-10 | 2020-07-10 | 76 | 12d |  |  | 罗志勇; 彭明东 | 16h |
| 79 | 8 | **项目交付** | 5d | 2020-07-22 | 2020-07-28 |  |  |  |  | 罗志勇; 欧阳玲军; 彭明东; 中试部 | 320h |
| 80 | 8.1 | 软件BUG解决 | 3d | 2020-07-22 | 2020-07-24 | 67 | 0d |  |  | 罗志勇; 欧阳玲军; 彭明东; 中试部 | 96h |
| 81 | 8.2 | 软件交付 | 2d | 2020-07-27 | 2020-07-28 | 80 | 0d |  |  | 罗志勇; 欧阳玲军; 彭明东; 中试部 | 64h |
